# Contabilidad

Schedule from Planner, 2008-04-22 to 2008-06-12.
cilleruelo.com

## Calendars

- Calendario Cilleruelo: Mon-Sun 08:00-13:30, 15:30-18:30. Exceptions (off unless hours are given): 2008-04-23.

## Resources

| Resource |
| --- |
| Juan C.Cilleruelo |

## Schedule

| ID | WBS | Task | Start | Finish | Predecessors | Complete | Resources | Work |
| --- | --- | --- | --- | --- | --- | --- | --- | --- |
| 1 | 1 | ICE-NET 7 (Crear Versión Simple de los Componentes de Delphi) | 2008-04-22 | 2008-04-22 |  | 100% | Juan C.Cilleruelo | 1.25h |
| 2 | 2 | Login.pas | 2008-04-22 | 2008-04-22 |  | 100% |  | 4h |
| 3 | 3 | Splash.pas | 2008-04-22 | 2008-04-22 |  | 100% |  | 8h |
| 4 | 4 | **MANTENIMIENTOS SENCILLOS** | 2008-04-22 | 2008-04-28 |  |  |  | 51h |
| 5 | 4.1 | Quitar Menús Especiales y sus Componentes | 2008-04-22 | 2008-04-22 |  | 100% | Juan C.Cilleruelo | 7h |
| 6 | 4.2 | Provincias.pas | 2008-04-22 | 2008-04-25 | 5 | 100% | Juan C.Cilleruelo | 16h |
| 7 | 4.3 | Paises.pas | 2008-04-25 | 2008-04-26 | 6 |  |  | 4h |
| 8 | 4.4 | TiposDiario.pas | 2008-04-26 | 2008-04-26 | 7 |  |  | 4h |
| 9 | 4.5 | Comerciales.pas | 2008-04-26 | 2008-04-27 | 8 |  |  | 4h |
| 10 | 4.6 | Delegaciones.pas | 2008-04-27 | 2008-04-27 | 9 |  |  | 4h |
| 11 | 4.7 | Departamentos.pas | 2008-04-27 | 2008-04-28 | 10 |  |  | 4h |
| 12 | 4.8 | Secciones.pas | 2008-04-28 | 2008-04-28 | 11 |  |  | 4h |
| 13 | 4.9 | Proyectos.pas | 2008-04-28 | 2008-04-28 | 12 |  |  | 4h |
| 14 | 5 | **MANTENIMIENTOS COMPLEJOS** | 2008-04-22 | 2008-04-28 |  |  |  | 48h |
| 15 | 5.1 | FormasPago.pas | 2008-04-22 | 2008-04-22 |  |  |  | 6h |
| 16 | 5.2 | Usuarios.pas | 2008-04-22 | 2008-04-24 | 15 |  |  | 6h |
| 17 | 5.3 | Conceptos.pas | 2008-04-24 | 2008-04-25 | 16 |  |  | 6h |
| 18 | 5.4 | Titulos.pas | 2008-04-25 | 2008-04-25 | 17 |  |  | 6h |
| 19 | 5.5 | Grupos.pas | 2008-04-25 | 2008-04-26 | 18 |  |  | 6h |
| 20 | 5.6 | Cuentas.pas | 2008-04-26 | 2008-04-27 | 19 |  |  | 6h |
| 21 | 5.7 | SubCuentas.pas | 2008-04-27 | 2008-04-27 | 20 |  |  | 6h |
| 22 | 5.8 | Analiticas.pas | 2008-04-27 | 2008-04-28 | 21 |  |  | 6h |
| 23 | 6 | **LANZADORES DE INFORMES** | 2008-04-22 | 2008-05-06 |  |  |  | 120.5h |
| 24 | 6.1 | PlanContable.pas | 2008-04-22 | 2008-04-22 |  |  |  | 8h |
| 25 | 6.2 | PlanAnalitico.pas | 2008-04-22 | 2008-04-24 | 24 |  |  | 8h |
| 26 | 6.3 | FiltroListadoAsientos.pas | 2008-04-24 | 2008-04-25 | 25 |  |  | 8h |
| 27 | 6.4 | FiltroListadosMayor.pas | 2008-04-25 | 2008-04-26 | 26 |  |  | 8h |
| 28 | 6.5 | FiltroBalances.pas | 2008-04-26 | 2008-04-27 | 27 |  |  | 8h |
| 29 | 6.6 | FiltroSitPgCg.pas | 2008-04-27 | 2008-04-28 | 28 |  |  | 8h |
| 30 | 6.7 | BalAcumulados.pas | 2008-04-28 | 2008-04-29 | 29 |  |  | 8h |
| 31 | 6.8 | BalExplotacion.pas | 2008-04-29 | 2008-04-30 | 30 |  |  | 8h |

| ID | WBS | Task | Start | Finish | Predecessors | Work |
| --- | --- | --- | --- | --- | --- | --- |
| 32 | 6.9 | **Filtro Libro Facturas Emitidas** | 2008-04-30 | 2008-05-01 | 31 | 16.5h |
| 33 | 6.9.1 | FiltroLibroFacturasEmitidad.pas | 2008-04-30 | 2008-05-01 |  | 8.5h |
| 34 | 6.9.2 | IVA300.pas | 2008-04-30 | 2008-05-01 | 33SS | 8h |
| 35 | 6.10 | Filtro347.pas | 2008-05-01 | 2008-05-02 | 32 | 8h |
| 36 | 6.11 | IRPF110.pas | 2008-05-02 | 2008-05-03 | 35 | 8h |
| 37 | 6.12 | IRPF115.pas | 2008-05-03 | 2008-05-04 | 36 | 8h |
| 38 | 6.13 | ISoc202.pas | 2008-05-04 | 2008-05-05 | 37 | 8h |
| 39 | 6.14 | Amortizaciones.pas | 2008-05-05 | 2008-05-06 | 38 | 8h |
| 40 | 7 | **LANZADOR DE UTILIDADES** | 2008-04-22 | 2008-04-29 |  | 56h |
| 41 | 7.1 | RecalculoSaldos.pas | 2008-04-22 | 2008-04-22 |  | 8h |
| 42 | 7.2 | BorradoDiario.pas | 2008-04-22 | 2008-04-24 | 41 | 8h |
| 43 | 7.3 | TraspasoApuntes.pas | 2008-04-24 | 2008-04-25 | 42 | 8h |
| 44 | 7.4 | CopiaAsientos.pas | 2008-04-25 | 2008-04-26 | 43 | 8h |
| 45 | 7.5 | PunteoDiario.pas | 2008-04-26 | 2008-04-27 | 44 | 8h |
| 46 | 7.6 | CierreEjercicio.pas | 2008-04-27 | 2008-04-28 | 45 | 8h |
| 47 | 7.7 | EnlaceContable.pas | 2008-04-28 | 2008-04-29 | 46 | 8h |
| 48 | 8 | **DATAMODULOS** | 2008-04-22 | 2008-04-25 |  | 24h |
| 49 | 8.1 | DM.pas | 2008-04-22 | 2008-04-22 |  | 8h |
| 50 | 8.2 | DMControl.pas | 2008-04-22 | 2008-04-24 | 49 | 8h |
| 51 | 8.3 | DMConta.pas | 2008-04-24 | 2008-04-25 | 50 | 8h |
| 52 | 9 | **MODULOS PRINCIPALES** | 2008-04-22 | 2008-04-25 |  | 57h |
| 53 | 9.1 | Diario.pas (Carga Asientos) | 2008-04-22 | 2008-04-22 |  | 8h |
| 54 | 9.2 | **Cartera de Efectos** | 2008-04-22 | 2008-04-24 | 53 | 32.5h |
| 55 | 9.2.1 | CarteraEfectos.pas | 2008-04-22 | 2008-04-24 |  | 8.5h |
| 56 | 9.2.2 | EfectosComerciales.pas | 2008-04-22 | 2008-04-24 | 55SS | 8h |
| 57 | 9.2.3 | SituacionEfecto.pas | 2008-04-22 | 2008-04-24 | 55SS | 8h |
| 58 | 9.2.4 | GeneracionAsiento.pas | 2008-04-22 | 2008-04-24 | 55SS | 8h |

| ID | WBS | Task | Start | Finish | Predecessors | Work |
| --- | --- | --- | --- | --- | --- | --- |
| 59 | 9.3 | **Empresas** | 2008-04-24 | 2008-04-25 | 54 | 16.5h |
| 60 | 9.3.1 | Empresas.pas | 2008-04-24 | 2008-04-25 |  | 8.5h |
| 61 | 9.3.2 | UtilEmpresas.pas | 2008-04-24 | 2008-04-25 | 60SS | 8h |
| 62 | 10 | **CARGAS RÁPIDAS DE APUNTES** | 2008-04-22 | 2008-04-26 |  | 40.5h |
| 63 | 10.1 | **Carga Rápida Facturas** | 2008-04-22 | 2008-04-22 |  | 16.5h |
| 64 | 10.1.1 | CargaRapidaFacturas.pas | 2008-04-22 | 2008-04-22 |  | 8.5h |
| 65 | 10.1.2 | Vencimientos.pas | 2008-04-22 | 2008-04-22 | 64SS | 8h |
| 66 | 10.2 | CargaApuntes.pas | 2008-04-24 | 2008-04-24 | 63 | 8h |
| 67 | 10.3 | CargaRapidaNominas.pas | 2008-04-24 | 2008-04-25 | 66 | 8h |
| 68 | 10.4 | CargaCobrosPagos.pas | 2008-04-25 | 2008-04-26 | 67 | 8h |
| 69 | 11 | **UTILIDADES DEL SISTEMA** | 2008-04-22 | 2008-04-29 |  | 56h |
| 70 | 11.1 | ActualizacionDB.pas | 2008-04-22 | 2008-04-22 |  | 8h |
| 71 | 11.2 | Importacion.pas | 2008-04-22 | 2008-04-24 | 70 | 8h |
| 72 | 11.3 | TraspasoDatos.pas | 2008-04-24 | 2008-04-25 | 71 | 8h |
| 73 | 11.4 | Parametrizacion.pas | 2008-04-25 | 2008-04-26 | 72 | 8h |
| 74 | 11.5 | ParametrizacionFacturacion.pas | 2008-04-26 | 2008-04-27 | 73 | 8h |
| 75 | 11.6 | Calculadora.pas | 2008-04-27 | 2008-04-28 | 74 | 8h |
| 76 | 11.7 | PreviewForm.pas (Formulario Especial Informes) | 2008-04-28 | 2008-04-29 | 75 | 8h |
| 77 | 12 | **UTILIDADES VARIAS** | 2008-04-22 | 2008-04-25 |  | 32.5h |
| 78 | 12.1 | FiltroMayorSubcuenta.pas | 2008-04-22 | 2008-04-22 |  | 8h |
| 79 | 12.2 | NuevaSubcuenta.pas | 2008-04-22 | 2008-04-24 | 78 | 8h |
| 80 | 12.3 | **Carga Asiento** | 2008-04-24 | 2008-04-25 | 79 | 16.5h |
| 81 | 12.3.1 | CargaAsiento.pas | 2008-04-24 | 2008-04-25 |  | 8.5h |
| 82 | 12.3.2 | DetalleIVA.pas | 2008-04-24 | 2008-04-25 | 81SS | 8h |

| ID | WBS | Task | Start | Finish | Predecessors | Complete | Resources | Work |
| --- | --- | --- | --- | --- | --- | --- | --- | --- |
| 83 | 13 | **UNITS SIN FORM** | 2008-04-22 | 2008-04-30 |  |  |  | 64h |
| 84 | 13.1 | Globales.pas | 2008-04-22 | 2008-04-22 |  |  |  | 8h |
| 85 | 13.2 | General.pas | 2008-04-22 | 2008-04-24 | 84 |  |  | 8h |
| 86 | 13.3 | InfAsientos.pas | 2008-04-24 | 2008-04-25 | 85 |  |  | 8h |
| 87 | 13.4 | InfMayor.pas | 2008-04-25 | 2008-04-26 | 86 |  |  | 8h |
| 88 | 13.5 | InfLibroIVA.pas | 2008-04-26 | 2008-04-27 | 87 |  |  | 8h |
| 89 | 13.6 | InfMod347.pas | 2008-04-27 | 2008-04-28 | 88 |  |  | 8h |
| 90 | 13.7 | InfBalanceSumasSaldos.pas | 2008-04-28 | 2008-04-29 | 89 |  |  | 8h |
| 91 | 13.8 | InfBalanceSituacion.pas | 2008-04-29 | 2008-04-30 | 90 |  |  | 8h |
| 92 | 14 | **ELIMINACIÓN DE COMPONENTES DE TERCEROS** | 2008-04-22 | 2008-04-22 |  |  |  | 86h |
| 93 | 14.1 | Erradicar el BDE | 2008-04-22 | 2008-04-22 |  |  |  | 5.5h |
| 94 | 14.2 | First Class 4000 Std Vcl 7 Erradicar estos componentes. | 2008-04-22 | 2008-04-22 |  |  |  | 8h |
| 95 | 14.3 | Quitar el Componente UEspere. | 2008-04-22 | 2008-04-22 |  |  | Juan C.Cilleruelo | 8.5h |
| 96 | 14.4 | InfoPower 4000 Std_VCL 7 Erradicar estos Componentes. | 2008-04-22 | 2008-04-22 |  |  |  | 8h |
| 97 | 14.5 | Orpheus400 Erradicar estos componentes | 2008-04-22 | 2008-04-22 |  |  |  | 8h |
| 98 | 14.6 | SysTools7 erradicar estos Componentes | 2008-04-22 | 2008-04-22 |  |  |  | 8h |
| 99 | 14.7 | am2000_d7 (Animated Menus) | 2008-04-22 | 2008-04-22 |  | 100% |  | 8h |
| 100 | 14.8 | OnGuard Erradicar estos componentes. | 2008-04-22 | 2008-04-22 |  |  |  | 8h |
| 101 | 14.9 | OPartner7 Erradicar estos componentes. | 2008-04-22 | 2008-04-22 |  |  |  | 8h |
| 102 | 14.10 | Siam.dpk. Erradicar estos componentes. | 2008-04-22 | 2008-04-22 |  |  |  | 8h |
| 103 | 14.11 | BaseDatos.dpk Erradicar estos componentes | 2008-04-22 | 2008-04-22 |  |  |  | 8h |
| 104 | 15 | **NUEVO FORMATO DE LOS INFORMES** | 2008-04-22 | 2008-06-12 |  |  |  | 432h |
| 105 | 15.1 | CarteraBanco.rtm | 2008-04-22 | 2008-04-22 |  |  |  | 8h |
| 106 | 15.2 | Cartera Comercial.rtm | 2008-04-22 | 2008-04-24 | 105 |  |  | 8h |
| 107 | 15.3 | CarteraFVenc.rtm | 2008-04-24 | 2008-04-25 | 106 |  |  | 8h |
| 108 | 15.4 | CarteraSituacion.rtm | 2008-04-25 | 2008-04-26 | 107 |  |  | 8h |
| 109 | 15.5 | CarteraSubCta.rtm | 2008-04-26 | 2008-04-27 | 108 |  |  | 8h |
| 110 | 15.6 | LAmortizacion.rtm | 2008-04-27 | 2008-04-28 | 109 |  |  | 8h |
| 111 | 15.7 | LAnalíticas.rtm | 2008-04-28 | 2008-04-29 | 110 |  |  | 8h |
| 112 | 15.8 | LAsientos.rtm | 2008-04-29 | 2008-04-30 | 111 |  |  | 8h |
| 113 | 15.9 | LAsientosExpandido.rtm | 2008-04-30 | 2008-05-01 | 112 |  |  | 8h |
| 114 | 15.10 | LBalanceAcumulados.rtm | 2008-05-01 | 2008-05-02 | 113 |  |  | 8h |
| 115 | 15.11 | LBalanceExplotacion.rtm | 2008-05-02 | 2008-05-03 | 114 |  |  | 8h |
| 116 | 15.12 | LBlanceExplotacion_Analitica.rtm | 2008-05-03 | 2008-05-04 | 115 |  |  | 8h |
| 117 | 15.13 | LBalanceSituacion.rtm | 2008-05-04 | 2008-05-05 | 116 |  |  | 8h |
| 118 | 15.14 | LBalanceSituacionAnterior.rtm | 2008-05-05 | 2008-05-06 | 117 |  |  | 8h |
| 119 | 15.15 | LComerciales.rtm | 2008-05-06 | 2008-05-07 | 118 |  |  | 8h |
| 120 | 15.16 | LConceptos.rtm | 2008-05-07 | 2008-05-08 | 119 |  |  | 8h |
| 121 | 15.17 | LCuentaPPGG.rtm | 2008-05-08 | 2008-05-08 | 120 |  |  | 8h |
| 122 | 15.18 | LCuentaPPGGAnterior.rtm | 2008-05-09 | 2008-05-09 | 121 |  |  | 8h |
| 123 | 15.19 | LCuentas.rtm | 2008-05-09 | 2008-05-10 | 122 |  |  | 8h |
| 124 | 15.20 | LDelegaciones.rtm | 2008-05-10 | 2008-05-11 | 123 |  |  | 8h |
| 125 | 15.21 | LDepartamentos.rtm | 2008-05-11 | 2008-05-12 | 124 |  |  | 8h |
| 126 | 15.22 | LDetalleInmobilizado.rtm | 2008-05-12 | 2008-05-13 | 125 |  |  | 8h |
| 127 | 15.23 | LDetalleSubcuentas.rtm | 2008-05-13 | 2008-05-14 | 126 |  |  | 8h |
| 128 | 15.24 | LEmpresas.rtm | 2008-05-14 | 2008-05-15 | 127 |  |  | 8h |
| 129 | 15.25 | LFormasPago.rtm | 2008-05-15 | 2008-05-16 | 128 |  |  | 8h |
| 130 | 15.26 | LGastos.rtm | 2008-05-16 | 2008-05-17 | 129 |  |  | 8h |
| 131 | 15.27 | LGastosConcepto.rtm | 2008-05-17 | 2008-05-18 | 130 |  |  | 8h |
| 132 | 15.28 | LGastosExpandido.rtm | 2008-05-18 | 2008-05-19 | 131 |  |  | 8h |
| 133 | 15.29 | LGastosSubcuenta.rtm | 2008-05-19 | 2008-05-20 | 132 |  |  | 8h |
| 134 | 15.30 | LGrupos.rtm | 2008-05-20 | 2008-05-21 | 133 |  |  | 8h |
| 135 | 15.31 | LIncidenciasTraspaso.rtm | 2008-05-21 | 2008-05-22 | 134 |  |  | 8h |
| 136 | 15.32 | LIngresoGastos.rtm | 2008-05-22 | 2008-05-23 | 135 |  |  | 8h |
| 137 | 15.33 | LLibroFacturasEmitidas2.rtm | 2008-05-23 | 2008-05-24 | 136 |  |  | 8h |
| 138 | 15.34 | LLbroFacturasEmitidas.rtm | 2008-05-24 | 2008-05-24 | 137 |  |  | 8h |
| 139 | 15.35 | LLibroFacturasEmitidasSubcta.rtm | 2008-05-25 | 2008-05-25 | 138 |  |  | 8h |
| 140 | 15.36 | LLibroFacturasRecibidas.rtm | 2008-05-25 | 2008-05-26 | 139 |  |  | 8h |
| 141 | 15.37 | LLibroFacturasRecibidasSubcta.rtm | 2008-05-26 | 2008-05-27 | 140 |  |  | 8h |
| 142 | 15.38 | LLibroFacturasTipoIVA.rtm | 2008-05-27 | 2008-05-28 | 141 |  |  | 8h |
| 143 | 15.39 | LMayor3.rtm | 2008-05-28 | 2008-05-29 | 142 |  |  | 8h |
| 144 | 15.40 | LMayor.rtm | 2008-05-29 | 2008-05-30 | 143 |  |  | 8h |
| 145 | 15.41 | LModelo300.rtm | 2008-05-30 | 2008-05-31 | 144 |  |  | 8h |
| 146 | 15.42 | LOperaTer347.rtm | 2008-05-31 | 2008-06-01 | 145 |  |  | 8h |
| 147 | 15.43 | LOperaTer349.rtm | 2008-06-01 | 2008-06-02 | 146 |  |  | 8h |
| 148 | 15.44 | LPaises.rtm | 2008-06-02 | 2008-06-03 | 147 |  |  | 8h |
| 149 | 15.45 | LPlanAnalitico.rtm | 2008-06-03 | 2008-06-04 | 148 |  |  | 8h |
| 150 | 15.46 | LPlanContable.rtm | 2008-06-04 | 2008-06-05 | 149 |  |  | 8h |
| 151 | 15.47 | LProvincias.rtm | 2008-06-05 | 2008-06-06 | 150 |  |  | 8h |
| 152 | 15.48 | LProyectos.rtm | 2008-06-06 | 2008-06-07 | 151 |  |  | 8h |

Notes:
- 95: Este es un componente muy sencillo pero bastante útil, que se / encuentra integrado en los componentes de SIAM. / Consiste en darle un aspecto más actual, ponerlo como parte / del programa.

| ID | WBS | Task | Start | Finish | Predecessors | Work |
| --- | --- | --- | --- | --- | --- | --- |
| 153 | 15.49 | LSecciones.rtm | 2008-06-07 | 2008-06-08 | 152 | 8h |
| 154 | 15.50 | LSubCuentas.rtm | 2008-06-08 | 2008-06-09 | 153 | 8h |
| 155 | 15.51 | LSumasSaldos.rtm | 2008-06-09 | 2008-06-09 | 154 | 8h |
| 156 | 15.52 | LSumasSaldosSaldo.rtm | 2008-06-10 | 2008-06-10 | 155 | 8h |
| 157 | 15.53 | LtiposDiario.rtm | 2008-06-10 | 2008-06-11 | 156 | 8h |
| 158 | 15.54 | LTitulos.rtm | 2008-06-11 | 2008-06-12 | 157 | 8h |
